# BL - Construction of Schools Program (Phase 9)

How a schedule from Primavera P6 changed from version to version. A marks actual dates.

## Version 1 (data date 2018-01-01, saved 2020-12-28, file Baseline.xer)

| ID | WBS | Task | Duration | Start | Finish | Predecessors | Total float |
| --- | --- | --- | --- | --- | --- | --- | --- |
|  | 1 | **KEY DATES AND MILESTONES** |  | 2018-01-01 | 2019-03-29 |  |  |
| KEY-16 |  | Project Start Date | 0d | 2018-01-01 | 2018-01-01 |  | 0d |
| KEY-26 |  | Start Construction For Villa Building | 0d | 2018-01-31 | 2018-01-31 | A1010 | 0d |
| KEY-46 |  | Completion of Construction For Villa Building | 0d | 2018-11-19 | 2018-11-19 | A1190, A1290, A1320 | 0d |
| KEY-36 |  | Start Construction For External Works | 0d | 2018-11-20 | 2018-11-20 | KEY-46 | 0d |
| KEY-56 |  | Completion of Construction For External Works | 0d | 2019-02-25 | 2019-02-25 | E1081 | 12d |
| KEY-6 |  | Project Finish Date | 0d | 2019-03-29 | 2019-03-29 | A1080 | 0d |
|  | 2 | **PRELIMINARIES** |  | 2018-01-01 | 2018-01-30 |  |  |
| A1010 |  | Mobilization and Site Office Installation | 30d | 2018-01-01 | 2018-01-30 | KEY-16 | 0d |
|  | 6 | **PROCUREMENT** |  | 2018-01-11 | 2018-10-28 |  |  |
|  | 3 | **SUBCONTRACTOERS/SUPPLIERS** |  | 2018-01-11 | 2018-08-15 |  |  |
| 1-SUB-100 |  | Concrete | 7d | 2018-01-11 | 2018-01-17 | KEY-16 FS+10d | 17d |
| 1-SUB-110 |  | Block | 7d | 2018-02-20 | 2018-02-26 | KEY-16 FS+50d | 72d |
| 1-SUB-150 |  | AC Machine | 7d | 2018-02-20 | 2018-02-26 | KEY-16 FS+50d | 82d |
| 1-SUB-160 |  | Electrical | 7d | 2018-02-20 | 2018-02-26 | KEY-16 FS+50d | 82d |
| 1-SUB-170 |  | Plumbing | 7d | 2018-02-20 | 2018-02-26 | KEY-16 FS+50d | 82d |
| 1-SUB-200 |  | Fire Fighting | 7d | 2018-02-20 | 2018-02-26 | KEY-16 FS+50d | 82d |
| 1-SUB-120 |  | Ceramic | 7d | 2018-04-11 | 2018-04-17 | KEY-16 FS+100d | 14d |
| 1-SUB-130 |  | Doors and window | 7d | 2018-04-11 | 2018-04-17 | KEY-16 FS+100d | 26d |
| 1-SUB-140 |  | Wood Works | 7d | 2018-05-01 | 2018-05-07 | KEY-16 FS+120d | 51d |
| 1-SUB-180 |  | Mirrors & Bath Accessories | 7d | 2018-05-01 | 2018-05-07 | KEY-16 FS+120d | 212d |
| 1-SUB-190 |  | Landscaping | 7d | 2018-08-09 | 2018-08-15 | KEY-16 FS+220d | 92d |
|  | 1 | **MATERIAL SUBMISSION** |  | 2018-01-18 | 2018-08-22 |  |  |
| 2-MS1000 |  | Concrete | 7d | 2018-01-18 | 2018-01-24 | 1-SUB-100 | 17d |
| 2-MS1010 |  | Block | 7d | 2018-02-27 | 2018-03-05 | 1-SUB-110 | 72d |
| 2-MS1050 |  | AC Machine | 7d | 2018-02-27 | 2018-03-05 | 1-SUB-150 | 82d |
| 2-MS1060 |  | Electrical | 7d | 2018-02-27 | 2018-03-05 | 1-SUB-160 | 82d |
| 2-MS1070 |  | Plumbing | 7d | 2018-02-27 | 2018-03-05 | 1-SUB-170 | 82d |
| 2-MS1100 |  | Fire Fighting | 7d | 2018-02-27 | 2018-03-05 | 1-SUB-200 | 82d |
| 2-MS1020 |  | Ceramic | 7d | 2018-04-18 | 2018-04-24 | 1-SUB-120 | 14d |
| 2-MS1030 |  | Doors and window | 7d | 2018-04-18 | 2018-04-24 | 1-SUB-130 | 26d |
| 2-MS1040 |  | Wood Works | 7d | 2018-05-08 | 2018-05-14 | 1-SUB-140 | 51d |
| 2-MS1080 |  | Mirrors & Bath Accessories | 7d | 2018-05-08 | 2018-05-14 | 1-SUB-180 | 212d |
| 2-MS1090 |  | Landscaping | 7d | 2018-08-16 | 2018-08-22 | 1-SUB-190 | 92d |
|  | 2 | **MATERIAL APPROVAL** |  | 2018-01-25 | 2018-08-29 |  |  |
| 3-MA1000 |  | Concrete | 7d | 2018-01-25 | 2018-01-31 | 2-MS1000 | 17d |
| 3-MA1010 |  | Block | 7d | 2018-03-06 | 2018-03-12 | 2-MS1010 | 72d |
| 3-MA1050 |  | AC Machine | 7d | 2018-03-06 | 2018-03-12 | 2-MS1050 | 82d |
| 3-MA1060 |  | Electrical | 7d | 2018-03-06 | 2018-03-12 | 2-MS1060 | 82d |
| 3-MA1070 |  | Plumbing | 7d | 2018-03-06 | 2018-03-12 | 2-MS1070 | 82d |
| 3-MA1100 |  | Fire Fighting | 7d | 2018-03-06 | 2018-03-12 | 2-MS1100 | 82d |
| 3-MA1020 |  | Ceramic | 7d | 2018-04-25 | 2018-05-01 | 2-MS1020 | 14d |
| 3-MA1030 |  | Doors and window | 7d | 2018-04-25 | 2018-05-01 | 2-MS1030 | 26d |
| 3-MA1040 |  | Wood Works | 7d | 2018-05-15 | 2018-05-21 | 2-MS1040 | 51d |
| 3-MA1080 |  | Mirrors & Bath Accessories | 7d | 2018-05-15 | 2018-05-21 | 2-MS1080 | 212d |
| 3-MA1090 |  | Landscaping | 7d | 2018-08-23 | 2018-08-29 | 2-MS1090 | 92d |
|  | 5 | **MATERIAL DEVIVERY** |  | 2018-02-01 | 2018-10-28 |  |  |
| 4-MD1000 |  | Concrete | 7d | 2018-02-01 | 2018-02-07 | 3-MA1000 | 17d |
| 4-MD1010 |  | Block | 7d | 2018-03-13 | 2018-03-19 | 3-MA1010 | 72d |
| 4-MD1050 |  | AC Machine | 60d | 2018-03-13 | 2018-05-11 | 3-MA1050 | 82d |
| 4-MD1060 |  | Electrical | 60d | 2018-03-13 | 2018-05-11 | 3-MA1060 | 82d |
| 4-MD1070 |  | Plumbing | 60d | 2018-03-13 | 2018-05-11 | 3-MA1070 | 82d |
| 4-MD1100 |  | Fire Fighting | 60d | 2018-03-13 | 2018-05-11 | 3-MA1100 | 82d |
| 4-MD1020 |  | Ceramic | 60d | 2018-05-02 | 2018-06-30 | 3-MA1020 | 14d |
| 4-MD1030 |  | Doors and window | 60d | 2018-05-02 | 2018-06-30 | 3-MA1030 | 26d |
| 4-MD1040 |  | Wood Works | 60d | 2018-05-22 | 2018-07-20 | 3-MA1040 | 51d |
| 4-MD1080 |  | Mirrors & Bath Accessories | 60d | 2018-05-22 | 2018-07-20 | 3-MA1080 | 212d |
| 4-MD1090 |  | Landscaping | 60d | 2018-08-30 | 2018-10-28 | 3-MA1090 | 92d |
|  | 3 | **ENGINEERING** |  | 2018-03-02 | 2018-05-28 |  |  |
|  | 1 | **SHOPDAWINGS SUBMITTAL** |  | 2018-03-02 | 2018-05-14 |  |  |
| 1-SDS100 |  | Structural Drawings | 14d | 2018-03-02 | 2018-03-15 | KEY-16 FS+60d | 12d |
| 1-SDS110 |  | Finishes Drawings | 14d | 2018-04-11 | 2018-04-24 | KEY-16 FS+100d | 22d |
| 1-SDS120 |  | Mechanical Drawings | 14d | 2018-05-01 | 2018-05-14 | KEY-16 FS+120d | 65d |
| 1-SDS130 |  | Electrical Drawings | 14d | 2018-05-01 | 2018-05-14 | KEY-16 FS+120d | 65d |
| 1-SDS140 |  | Fire Fighting Drawings | 14d | 2018-05-01 | 2018-05-14 | KEY-16 FS+120d | 65d |
| 1-SDS150 |  | Plumbing Drawings | 14d | 2018-05-01 | 2018-05-14 | KEY-16 FS+120d | 65d |
|  | 2 | **SHOPDAWINGS APPROVAL** |  | 2018-03-16 | 2018-05-28 |  |  |
| 2-SDA1000 |  | Structural Drawings | 14d | 2018-03-16 | 2018-03-29 | 1-SDS100 | 12d |
| 2-SDA1010 |  | Finishes Drawings | 14d | 2018-04-25 | 2018-05-08 | 1-SDS110 | 22d |
| 2-SDA1020 |  | Mechanical Drawings | 14d | 2018-05-15 | 2018-05-28 | 1-SDS120 | 65d |

| ID | WBS | Task | Duration | Start | Finish | Predecessors | Total float |
| --- | --- | --- | --- | --- | --- | --- | --- |
| 2-SDA1030 |  | Electrical Drawings | 14d | 2018-05-15 | 2018-05-28 | 1-SDS130 | 65d |
| 2-SDA1040 |  | Fire Fighting Drawings | 14d | 2018-05-15 | 2018-05-28 | 1-SDS140 | 65d |
| 2-SDA1050 |  | Plumbing Drawings | 14d | 2018-05-15 | 2018-05-28 | 1-SDS150 | 65d |
|  | 4 | **CONSTRUCTION** |  | 2018-01-31 | 2019-03-09 |  |  |
|  | 1 | **BUILDING WORKS** |  | 2018-01-31 | 2019-01-11 |  |  |
|  | 3 | **CONCRETE WORKS** |  | 2018-01-31 | 2018-06-11 |  |  |
|  | 1 | **SUB-STRUCTRE** |  | 2018-01-31 | 2018-04-10 |  |  |
| A1030 |  | Excavation Works | 25d | 2018-01-31 | 2018-02-24 | KEY-26 | 0d |
| A1050 |  | Foundation Works | 45d | 2018-02-25 | 2018-04-10 | A1030, 4-MD1000 | 0d |
|  | 2 | **GROUND FLOOR** |  | 2018-04-11 | 2018-05-15 |  |  |
| A1210 |  | Ground Floor Slab | 20d | 2018-04-11 | 2018-04-30 | A1050, 2-SDA1000 | 0d |
| A1220 |  | Ground Floor Columns | 15d | 2018-05-01 | 2018-05-15 | A1210 | 0d |
|  | 3 | **ROOF** |  | 2018-05-16 | 2018-06-11 |  |  |
| A1230 |  | Roof Slab | 15d | 2018-05-16 | 2018-05-30 | A1220 | 0d |
| A1240 |  | Parapet | 12d | 2018-05-31 | 2018-06-11 | A1230 | 136d |
|  | 6 | **FINISHES** |  | 2018-05-31 | 2019-01-11 |  |  |
|  | 2 | **GROUND FLOOR** |  | 2018-05-31 | 2019-01-11 |  |  |
| A1250 |  | Block Works | 20d | 2018-05-31 | 2018-06-19 | A1230, 4-MD1010, 2-SDA1010 | 0d |
| A1260 |  | Plaster | 15d | 2018-06-30 | 2018-07-14 | A1250, A1170 | 0d |
| A1270 |  | Ceramic | 12d | 2018-07-15 | 2018-07-26 | A1260, 4-MD1020 | 0d |
| A1300 |  | Doors and windows Works | 15d | 2018-07-27 | 2018-08-10 | A1270, 4-MD1030 | 0d |
| A1340 |  | Epoxy Coating-Services Area | 30d | 2018-08-11 | 2018-09-09 | A1300 | 0d |
| A1280 |  | Ceiling Works | 30d | 2018-08-26 | 2018-09-24 | A1270, A1180 | 6d |
| A1350 |  | Kitchen Cabinets | 12d | 2018-09-10 | 2018-09-21 | A1300, 4-MD1040, A1340 | 0d |
| A1360 |  | Vanity Counter | 4d | 2018-09-22 | 2018-09-25 | A1300, A1350, A1350 FF | 0d |
| A1370 |  | Wooden Doors | 5d | 2018-09-26 | 2018-09-30 | A1300, A1360, A1280 FF | 0d |
| A1290 |  | Painting - 1st Coat | 10d | 2018-10-01 | 2018-10-10 | A1280, A1370 | 0d |
| A1380 |  | Wardrobes | 50d | 2018-10-31 | 2018-12-19 | A1300, A1370, A1290 FS+20d | 57d |
| A1330 |  | Painting Final Coat | 8d | 2018-12-15 | 2018-12-22 | A1300, A1350, A1360, A1370, A1380 FS-5d, A1380 FF, A1380 SS | 57d |
| A1390 |  | Mirrors & Bath Accessories | 20d | 2018-12-23 | 2019-01-11 | A1300, 4-MD1080, A1290 FS+15d, A1330 | 57d |
|  | 3 | **ROOF** |  | 2018-05-31 | 2018-08-08 |  |  |
| A1410 |  | Roof Waterproofing woks | 5d | 2018-05-31 | 2018-06-04 | A1230 | 278d |
| A1310 |  | Plaster | 10d | 2018-07-15 | 2018-07-24 | A1240, A1260 | 103d |
| A1320 |  | Painting | 15d | 2018-07-25 | 2018-08-08 | A1310 | 103d |
| A1400 |  | Balcony Handrails | 5d | 2018-07-25 | 2018-07-29 | A1310 | 223d |
|  | 4 | **SERVICES** |  | 2018-06-20 | 2018-11-19 |  |  |
| A1170 |  | MEP 1St FIX (Conduits, pipes inside walls) | 10d | 2018-06-20 | 2018-06-29 | A1250 | 0d |
| A1180 |  | MEP 2nd Fix (above ceiling AC and Electrical Works) | 30d | 2018-07-27 | 2018-08-25 | A1270, 4-MD1050, 4-MD1060, 4-MD1070, 4-MD1100, 2-SDA1020, 2-SDA1040, 2-SDA1050, 2-SDA1030 | 6d |
| A1190 |  | MEP Final Fix (Light fixtures ,fire alarm ,AC diffusers ) | 40d | 2018-10-11 | 2018-11-19 | A1180, A1290 | 0d |
|  | 5 | **EXTERNAL WORKS** |  | 2018-11-20 | 2019-03-09 |  |  |
| E1070 |  | Fence Works | 50d | 2018-11-20 | 2019-01-08 | KEY-36 | 0d |
| E1071 |  | External Tiling Works | 25d | 2019-01-09 | 2019-02-02 | E1070 | 35d |
| E1080 |  | Installation of Wheel Stopper & Corner Gaurd | 60d | 2019-01-09 | 2019-03-09 | E1070 | 0d |
| E1081 |  | Green Area Works | 40d | 2019-01-17 | 2019-02-25 | E1070 FS+8d, 4-MD1090 | 12d |
|  | 5 | **HANDING OVER** |  | 2018-12-30 | 2019-03-29 |  |  |
| HOV110 |  | Submission of As Built Drawings | 10d | 2018-12-30 | 2019-01-08 | E1070 FF | 60d |
| A1080 |  | Project Handing Over and Authority approvals | 20d | 2019-03-10 | 2019-03-29 | E1071, A1190 SS, E1081, A1320, KEY-56, A1410, A1400, HOV110, A1340, A1390, A1330, E1080 | 0d |

## Version 2 (data date 2018-10-09, saved 2020-12-28, file Updated.xer)

Last finish 2019-03-29 → 2019-04-10 (+12d). Complete tasks 0 → 46.

Changed:

| ID | Task | Start | Finish | Complete | Total float | Other |
| --- | --- | --- | --- | --- | --- | --- |
| 1 | **KEY DATES AND MILESTONES** |  | 2019-03-29 → 2019-04-10 (+12d) |  |  |  |
| KEY-16 | Project Start Date | 2018-01-01 A | 2018-01-01 A | 0% → 100% | 0d → none |  |
| KEY-26 | Start Construction | 2018-01-31 A | 2018-01-31 A | 0% → 100% | 0d → none | was named Start Construction For Villa Building |
| KEY-46 | Completion of Construction For Villa Building | 2018-11-19 A | 2018-11-19 A | 0% → 100% | 0d → none |  |
| KEY-36 | Start Construction For External Works | 2018-11-20 → 2019-01-10 (+51d) | 2018-11-20 → 2019-01-10 (+51d) |  |  |  |
| KEY-56 | Completion of Construction For External Works | 2019-02-25 → 2019-03-09 (+12d) | 2019-02-25 → 2019-03-09 (+12d) |  |  |  |
| KEY-6 | Project Finish Date | 2019-03-29 → 2019-04-10 (+12d) | 2019-03-29 → 2019-04-10 (+12d) |  |  |  |
| 2 | **PRELIMINARIES** |  | 2018-01-30 → 2018-10-09 (+252d) |  |  |  |
| A1010 | Mobilization and Site Office Installation | 2018-01-01 A | 2018-01-30 → 2018-10-09 (+252d) | 0% → 97% |  |  |
| 6 | **PROCUREMENT** | 2018-01-11 → 2018-01-07 (-4d) | 2018-10-28 → 2018-12-28 (+61d) |  |  |  |
| 3 | **SUBCONTRACTOERS/SUPPLIERS** |  | 2018-08-15 → 2018-10-15 (+61d) |  |  |  |
| 1-SUB-100 | Concrete | 2018-01-11 A | 2018-01-17 A | 0% → 100% | 17d → none |  |
| 1-SUB-110 | Block | 2018-02-20 A | 2018-02-26 A | 0% → 100% | 72d → none |  |
| 1-SUB-150 | AC Machine | 2018-02-20 A | 2018-02-26 A | 0% → 100% | 82d → none |  |
| 1-SUB-160 | Electrical | 2018-02-20 A | 2018-02-26 A | 0% → 100% | 82d → none |  |
| 1-SUB-170 | Plumbing | 2018-02-20 A | 2018-02-26 A | 0% → 100% | 82d → none |  |
| 1-SUB-200 | Fire Fighting | 2018-02-20 A | 2018-02-26 A | 0% → 100% | 82d → none |  |
| 1-SUB-120 | Ceramic | 2018-04-11 A | 2018-04-17 A | 0% → 100% | 14d → none |  |
| 1-SUB-130 | Doors and window | 2018-04-11 A | 2018-04-17 A | 0% → 100% | 26d → none |  |
| 1-SUB-140 | Wood Works | 2018-05-01 A | 2018-05-07 A | 0% → 100% | 51d → none |  |
| 1-SUB-190 | Landscaping | 2018-08-09 A | 2018-08-15 → 2018-10-15 (+61d) |  | 92d → 42.42d |  |
| 1-SUB-180 | Mirrors & Bath Accessories | 2018-05-01 → 2018-10-09 (+161d) | 2018-05-07 → 2018-10-15 (+161d) |  | 212d → 62.42d |  |
| 1 | **MATERIAL SUBMISSION** | 2018-01-18 → 2018-01-07 (-11d) | 2018-08-22 → 2018-10-22 (+61d) |  |  |  |
| 2-MS1060 | Electrical | 2018-02-27 → 2018-01-07 A (-51d) | 2018-03-05 → 2018-01-13 A (-51d) | 0% → 100% | 82d → none |  |
| 2-MS1030 | Doors and window | 2018-04-18 → 2018-01-07 A (-101d) | 2018-04-24 → 2018-01-17 A (-97d) | 0% → 100% | 26d → none |  |
| 2-MS1040 | Wood Works | 2018-05-08 → 2018-01-07 A (-121d) | 2018-05-14 → 2018-01-13 A (-121d) | 0% → 100% | 51d → none |  |
| 2-MS1070 | Plumbing | 2018-02-27 → 2018-01-07 A (-51d) | 2018-03-05 → 2018-10-12 (+221d) | 0% → 50% | 82d → 61.92d |  |
| 2-MS1000 | Concrete | 2018-01-18 → 2018-01-09 A (-9d) | 2018-01-24 → 2018-02-18 A (+25d) | 0% → 100% | 17d → none |  |
| 2-MS1010 | Block | 2018-02-27 → 2018-01-09 A (-49d) | 2018-03-05 → 2018-01-31 A (-33d) | 0% → 100% | 72d → none |  |
| 2-MS1020 | Ceramic | 2018-04-18 → 2018-01-09 A (-99d) | 2018-04-24 → 2018-01-10 A (-104d) | 0% → 100% | 14d → none |  |
| 2-MS1050 | AC Machine | 2018-02-27 → 2018-03-07 A (+8d) | 2018-03-05 → 2018-03-13 A (+8d) | 0% → 100% | 82d → none |  |
| 2-MS1100 | Fire Fighting | 2018-02-27 → 2018-10-09 (+224d) | 2018-03-05 → 2018-10-15 (+224d) |  | 82d → 52.42d |  |
| 2-MS1080 | Mirrors & Bath Accessories | 2018-05-08 → 2018-10-16 (+161d) | 2018-05-14 → 2018-10-22 (+161d) |  | 212d → 62.42d |  |
| 2-MS1090 | Landscaping | 2018-08-16 → 2018-10-16 (+61d) | 2018-08-22 → 2018-10-22 (+61d) |  | 92d → 42.42d |  |
| 2 | **MATERIAL APPROVAL** | 2018-01-25 → 2018-01-07 (-18d) | 2018-08-29 → 2018-10-29 (+61d) |  |  |  |
| 3-MA1000 | Concrete | 2018-01-25 → 2018-01-07 A (-18d) | 2018-01-31 → 2018-04-24 A (+83d) | 0% → 100% | 17d → none |  |
| 3-MA1010 | Block | 2018-03-06 → 2018-01-23 A (-42d) | 2018-03-12 → 2018-03-19 A (+7d) | 0% → 100% | 72d → none |  |
| 3-MA1030 | Doors and window | 2018-04-25 → 2018-01-23 A (-92d) | 2018-05-01 → 2018-01-23 A (-98d) | 0% → 100% | 26d → none |  |
| 3-MA1040 | Wood Works | 2018-05-15 → 2018-01-23 A (-112d) | 2018-05-21 → 2018-01-23 A (-118d) | 0% → 100% | 51d → none |  |
| 3-MA1050 | AC Machine | 2018-03-06 → 2018-01-23 A (-42d) | 2018-03-12 → 2018-03-23 A (+11d) | 0% → 100% | 82d → none |  |
| 3-MA1070 | Plumbing | 2018-03-06 → 2018-01-23 A (-42d) | 2018-03-12 → 2018-03-29 A (+17d) | 0% → 100% | 82d → none |  |
| 3-MA1020 | Ceramic | 2018-04-25 → 2018-01-24 A (-91d) | 2018-05-01 → 2018-01-24 A (-97d) | 0% → 100% | 14d → none |  |
| 3-MA1060 | Electrical | 2018-03-06 → 2018-01-24 A (-41d) | 2018-03-12 → 2018-03-20 A (+8d) | 0% → 100% | 82d → none |  |
| 3-MA1100 | Fire Fighting | 2018-03-06 → 2018-01-24 A (-41d) | 2018-03-12 → 2018-03-20 A (+8d) | 0% → 100% | 82d → none |  |
| 3-MA1080 | Mirrors & Bath Accessories | 2018-05-15 → 2018-10-23 (+161d) | 2018-05-21 → 2018-10-29 (+161d) |  | 212d → 62.42d |  |
| 3-MA1090 | Landscaping | 2018-08-23 → 2018-10-23 (+61d) | 2018-08-29 → 2018-10-29 (+61d) |  | 92d → 42.42d |  |
| 5 | **MATERIAL DEVIVERY** | 2018-02-01 → 2018-01-16 (-16d) | 2018-10-28 → 2018-12-28 (+61d) |  |  |  |
| 4-MD1000 | Concrete | 2018-02-01 → 2018-01-16 A (-16d) | 2018-02-07 → 2018-01-27 A (-11d) | 0% → 100% | 17d → none |  |
| 4-MD1030 | Doors and window | 2018-05-02 → 2018-01-21 A (-101d) | 2018-06-30 → 2018-03-21 A (-101d) | 0% → 100% | 26d → none |  |
| 4-MD1040 | Wood Works | 2018-05-22 → 2018-01-21 A (-121d) | 2018-07-20 → 2018-10-14 (+86d) | 0% → 90% | 51d → 62.3d |  |
| 4-MD1050 | AC Machine | 2018-03-13 → 2018-01-21 A (-51d) | 2018-05-11 → 2018-10-11 (+153d) | 0% → 95% | 82d → 68.42d |  |
| 4-MD1060 | Electrical | 2018-03-13 → 2018-01-21 A (-51d) | 2018-05-11 → 2018-10-14 (+156d) | 0% → 90% | 82d → 65.42d |  |
| 4-MD1070 | Plumbing | 2018-03-13 → 2018-01-21 A (-51d) | 2018-05-11 → 2018-10-18 (+160d) | 0% → 90% | 82d → 61.92d |  |
| 4-MD1100 | Fire Fighting | 2018-03-13 → 2018-01-21 A (-51d) | 2018-05-11 → 2018-10-27 (+169d) | 0% → 80% | 82d → 52.42d |  |
| 4-MD1010 | Block | 2018-03-13 → 2018-01-22 A (-50d) | 2018-03-19 → 2018-01-31 A (-47d) | 0% → 100% | 72d → none |  |
| 4-MD1020 | Ceramic | 2018-05-02 → 2018-01-23 A (-99d) | 2018-06-30 → 2018-10-20 (+112d) | 0% → 80% | 14d → 56d |  |
| 4-MD1080 | Mirrors & Bath Accessories | 2018-05-22 → 2018-10-30 (+161d) | 2018-07-20 → 2018-12-28 (+161d) |  | 212d → 62.42d |  |
| 4-MD1090 | Landscaping | 2018-08-30 → 2018-10-30 (+61d) | 2018-10-28 → 2018-12-28 (+61d) |  | 92d → 42.42d |  |
| 3 | **ENGINEERING** | 2018-03-02 → 2018-03-11 (+9d) | 2018-05-28 → 2018-10-27 (+152d) |  |  |  |
| 1 | **SHOPDAWINGS SUBMITTAL** | 2018-03-02 → 2018-03-11 (+9d) | 2018-05-14 → 2018-10-20 (+159d) |  |  |  |
| 1-SDS100 | Structural Drawings | 2018-03-02 → 2018-03-11 A (+9d) | 2018-03-15 → 2018-03-29 A (+14d) | 0% → 100% | 12d → none |  |
| 1-SDS110 | Finishes Drawings | 2018-04-11 → 2018-04-18 A (+7d) | 2018-04-24 → 2018-05-01 A (+7d) | 0% → 100% | 22d → none |  |
| 1-SDS120 | Mechanical Drawings | 2018-05-01 → 2018-05-15 A (+14d) | 2018-05-14 → 2018-10-11 (+150d) | 0% → 80% | 65d → 65.82d |  |
| 1-SDS130 | Electrical Drawings | 2018-05-01 → 2018-05-15 A (+14d) | 2018-05-14 → 2018-10-11 (+150d) | 0% → 80% | 65d → 61.62d |  |
| 1-SDS150 | Plumbing Drawings | 2018-05-01 → 2018-05-15 A (+14d) | 2018-05-14 → 2018-10-11 (+150d) | 0% → 80% | 65d → 60.22d |  |
| 1-SDS140 | Fire Fighting Drawings | 2018-05-01 → 2018-05-22 A (+21d) | 2018-05-14 → 2018-10-20 (+159d) | 0% → 20% | 65d → 53.22d |  |
| 2 | **SHOPDAWINGS APPROVAL** |  | 2018-05-28 → 2018-10-27 (+152d) |  |  |  |
| 2-SDA1000 | Structural Drawings | 2018-03-16 A | 2018-03-29 A | 0% → 100% | 12d → none |  |
| 2-SDA1010 | Finishes Drawings | 2018-04-25 A | 2018-05-08 A | 0% → 100% | 22d → none |  |
| 2-SDA1020 | Mechanical Drawings | 2018-05-15 A | 2018-05-28 → 2018-10-14 (+139d) | 0% → 80% | 65d → 65.82d |  |

| ID | Task | Start | Finish | Complete | Total float |
| --- | --- | --- | --- | --- | --- |
| 2-SDA1030 | Electrical Drawings | 2018-05-15 A | 2018-05-28 → 2018-10-18 (+143d) | 0% → 50% | 65d → 61.62d |
| 2-SDA1040 | Fire Fighting Drawings | 2018-05-15 A | 2018-05-28 → 2018-10-27 (+152d) | 0% → 50% | 65d → 53.22d |
| 2-SDA1050 | Plumbing Drawings | 2018-05-15 A | 2018-05-28 → 2018-10-20 (+145d) | 0% → 40% | 65d → 60.22d |
| 4 | **CONSTRUCTION** | 2018-01-31 → 2018-01-08 (-23d) | 2019-03-09 → 2019-03-21 (+12d) |  |  |
| 1 | **BUILDING WORKS** | 2018-01-31 → 2018-01-08 (-23d) | 2019-01-11 → 2019-03-18 (+66d) |  |  |
| 3 | **CONCRETE WORKS** | 2018-01-31 → 2018-01-08 (-23d) | 2018-06-11 → 2018-12-25 (+197d) |  |  |
| 1 | **SUB-STRUCTRE** | 2018-01-31 → 2018-01-08 (-23d) | 2018-04-10 → 2018-11-23 (+227d) |  |  |
| A1030 | Excavation Works | 2018-01-31 → 2018-01-08 A (-23d) | 2018-02-24 → 2018-02-01 A (-23d) | 0% → 100% | 0d → none |
| A1050 | Foundation Works | 2018-02-25 → 2018-02-02 A (-23d) | 2018-04-10 → 2018-11-23 (+227d) |  |  |
| 2 | **GROUND FLOOR** | 2018-04-11 → 2018-04-15 (+4d) | 2018-05-15 → 2018-12-13 (+212d) |  |  |
| A1210 | Ground Floor Slab | 2018-04-11 → 2018-04-15 A (+4d) | 2018-04-30 → 2018-12-13 (+227d) |  |  |
| A1220 | Ground Floor Columns | 2018-05-01 → 2018-05-12 A (+11d) | 2018-05-15 → 2018-05-26 A (+11d) | 0% → 100% | 0d → none |
| 3 | **ROOF** | 2018-05-16 → 2018-05-26 (+10d) | 2018-06-11 → 2018-12-25 (+197d) |  |  |
| A1230 | Roof Slab | 2018-05-16 → 2018-05-26 A (+10d) | 2018-05-30 → 2018-06-09 A (+10d) | 0% → 100% | 0d → none |
| A1240 | Parapet | 2018-05-31 → 2018-12-14 (+197d) | 2018-06-11 → 2018-12-25 (+197d) |  | 136d → 0.42d |
| 6 | **FINISHES** | 2018-05-31 → 2018-06-09 (+9d) | 2019-01-11 → 2019-03-18 (+66d) |  |  |
| 2 | **GROUND FLOOR** | 2018-05-31 → 2018-06-09 (+9d) | 2019-01-11 → 2019-03-18 (+66d) |  |  |
| A1250 | Block Works | 2018-05-31 → 2018-06-09 A (+9d) | 2018-06-19 → 2018-06-28 A (+9d) | 0% → 100% | 0d → none |
| A1270 | Ceramic | 2018-07-15 → 2018-07-03 A (-12d) | 2018-07-26 → 2018-07-14 A (-12d) | 0% → 100% | 0d → none |
| A1260 | Plaster | 2018-06-30 → 2018-07-09 A (+9d) | 2018-07-14 → 2018-07-23 A (+9d) | 0% → 100% | 0d → none |
| A1280 | Ceiling Works | 2018-08-26 → 2018-08-14 A (-12d) | 2018-09-24 → 2018-09-12 A (-12d) | 0% → 100% | 6d → none |
| A1300 | Doors and windows Works | 2018-07-27 → 2018-08-14 A (+18d) | 2018-08-10 → 2018-08-31 A (+21d) | 0% → 100% | 0d → none |
| A1340 | Epoxy Coating-Services Area | 2018-08-11 → 2018-08-31 A (+20d) | 2018-09-09 → 2018-12-16 (+98d) | 0% → 99% |  |
| A1290 | Painting - 1st Coat | 2018-10-01 → 2018-09-19 A (-12d) | 2018-10-10 → 2018-09-28 A (-12d) | 0% → 100% | 0d → none |
| A1350 | Kitchen Cabinets | 2018-09-10 → 2018-09-30 A (+20d) | 2018-09-21 → 2018-12-16 (+86d) | 0% → 99% |  |
| A1360 | Vanity Counter | 2018-09-22 → 2018-12-16 (+85d) | 2018-09-25 → 2018-12-20 (+86d) |  |  |
| A1370 | Wooden Doors | 2018-09-26 → 2018-12-20 (+85d) | 2018-09-30 → 2018-12-25 (+86d) |  |  |
| A1380 | Wardrobes | 2018-10-31 → 2019-01-04 (+65d) | 2018-12-19 → 2019-02-23 (+66d) |  | 57d → 3d |
| A1330 | Painting Final Coat | 2018-12-15 → 2019-02-18 (+65d) | 2018-12-22 → 2019-02-26 (+66d) |  | 57d → 3d |
| A1390 | Mirrors & Bath Accessories | 2018-12-23 → 2019-02-26 (+65d) | 2019-01-11 → 2019-03-18 (+66d) |  | 57d → 3d |
| 3 | **ROOF** | 2018-05-31 → 2018-07-04 (+34d) | 2018-08-08 → 2019-01-09 (+154d) |  |  |
| A1410 | Roof Waterproofing woks | 2018-05-31 → 2018-07-04 A (+34d) | 2018-06-04 → 2018-08-08 A (+65d) | 0% → 100% | 278d → none |
| A1310 | Plaster | 2018-07-15 → 2018-08-16 A (+32d) | 2018-07-24 → 2018-08-25 A (+32d) | 0% → 100% | 103d → none |
| A1320 | Painting | 2018-07-25 → 2018-12-26 (+154d) | 2018-08-08 → 2019-01-09 (+154d) |  | 103d → 0.42d |
| A1400 | Balcony Handrails | 2018-07-25 → 2018-12-26 (+154d) | 2018-07-29 → 2018-12-30 (+154d) |  | 223d → 80.42d |
| 4 | **SERVICES** | 2018-06-20 → 2018-08-04 (+45d) | 2018-11-19 → 2019-01-10 (+52d) |  |  |
| A1170 | MEP 1St FIX (Conduits, pipes inside walls) | 2018-06-20 → 2018-08-04 A (+45d) | 2018-06-29 → 2018-12-15 (+169d) | 0% → 80% |  |
| A1180 | MEP 2nd Fix (above ceiling AC and Electrical Works) | 2018-07-27 → 2018-08-14 A (+18d) | 2018-08-25 → 2018-12-21 (+118d) | 0% → 80% | 6d → 3.42d |
| A1190 | MEP Final Fix (Light fixtures ,fire alarm ,AC diffusers ) | 2018-10-11 → 2018-10-08 A (-3d) | 2018-11-19 → 2019-01-10 (+52d) | 0% → 60% |  |
| 5 | **EXTERNAL WORKS** | 2018-11-20 → 2018-10-08 (-43d) | 2019-03-09 → 2019-03-21 (+12d) |  |  |
| E1070 | Fence Works | 2018-11-20 → 2018-10-08 A (-43d) | 2019-01-08 → 2019-01-20 (+12d) | 0% → 80% |  |
| E1071 | External Tiling Works | 2019-01-09 A | 2019-02-02 → 2019-02-01 (-1d) | 0% → 50% | 35d → 47.5d |
| E1080 | Installation of Wheel Stopper & Corner Gaurd | 2019-01-09 → 2019-01-20 (+11d) | 2019-03-09 → 2019-03-21 (+12d) |  |  |
| E1081 | Green Area Works | 2019-01-17 → 2019-01-28 (+11d) | 2019-02-25 → 2019-03-09 (+12d) |  |  |
| 5 | **HANDING OVER** | 2018-12-30 → 2019-01-10 (+11d) | 2019-03-29 → 2019-04-10 (+12d) |  |  |
| HOV110 | Submission of As Built Drawings | 2018-12-30 → 2019-01-10 (+11d) | 2019-01-08 → 2019-01-20 (+12d) |  |  |
| A1080 | Project Handing Over and Authority approvals | 2019-03-10 → 2019-03-21 (+11d) | 2019-03-29 → 2019-04-10 (+12d) |  |  |
